# 0.30版本进度

Schedule from MS Project, 2010-03-10 to 2010-05-18, 7.5 hours a day, A marks actual dates.
微软中国

## Calendars

- 标准: Mon-Fri 08:00-12:00, 13:00-17:00; Sat-Sun off.

## Resources

| Resource |
| --- |
| 李柏晗 |
| 完成 |
| 未完成 |
| 符世龙 |
| 翟翊 |
| 林艺杰 |
| 洪锦旭 |

## Schedule

| ID | WBS | Task | Duration | Start | Finish | Predecessors | Complete | Remaining | Total slack | Free slack | Constraint | Work | Actual work |
| --- | --- | --- | --- | --- | --- | --- | --- | --- | --- | --- | --- | --- | --- |
| 1 | 1 | **alpha1版本（6周）** | 52.9d? | 2010-03-10 A | 2010-05-18 |  | 26% | 39.4d? | 0d |  |  | 236h | 61.5h |
| 2 | 1.1 | **服务端** | 49.7d? | 2010-03-15 A | 2010-05-18 |  | 38% | 30.64d? | 0d |  |  | 84h | 61.5h |
| 3 | 1.1.1 | **林艺杰** | 49.7d? | 2010-03-15 A | 2010-05-18 |  | 24% | 37.68d? | 0d |  |  |  |  |
| 4 | 1.1.1.1 | **模板表** | 2d? | 2010-03-15 A | 2010-03-16 A |  | 100% |  |  |  |  |  |  |
| 5 | 1.1.1.1.1 | 模板表数据读取的方案设定 | 1d? | 2010-03-15 A | 2010-03-15 A |  | 100% |  |  |  | start no earlier than 2010-03-15 |  |  |
| 6 | 1.1.1.1.2 | 模板表数据读取的修改 | 1d? | 2010-03-15 A | 2010-03-16 A | 5 | 100% |  |  |  |  |  |  |
| 7 | 1.1.1.2 | **人物属性** | 3d? | 2010-03-16 A | 2010-03-19 A | 4 | 100% |  |  |  |  |  |  |
| 8 | 1.1.1.2.1 | 人物属性的讨论 | 0.5d? | 2010-03-16 A | 2010-03-17 A |  | 100% |  |  |  |  |  |  |
| 9 | 1.1.1.2.2 | 数据库设计 | 0.5d? | 2010-03-17 A | 2010-03-17 A | 8 | 100% |  |  |  |  |  |  |
| 10 | 1.1.1.2.3 | 网络协议设计 | 0.5d? | 2010-03-17 A | 2010-03-18 A | 9 | 100% |  |  |  |  |  |  |
| 11 | 1.1.1.2.4 | 单元测试 | 0.5d? | 2010-03-18 A | 2010-03-18 A | 10 | 100% |  |  |  |  |  |  |
| 12 | 1.1.1.2.5 | 和客户端联调对接 | 1d? | 2010-03-18 A | 2010-03-19 A | 11 | 100% |  |  |  |  |  |  |
| 13 | 1.1.1.3 | **创建人物** | 5d? | 2010-03-19 A | 2010-03-26 | 7 | 57% | 2.14d? | 39.7d |  |  |  |  |
| 14 | 1.1.1.3.1 | 创建人物的外观 | 2d? | 2010-03-19 A | 2010-03-23 A |  | 100% |  |  |  |  |  |  |
| 15 | 1.1.1.3.2 | 创建人物的服装 | 1d? | 2010-03-23 | 2010-03-24 | 14 |  |  | 39.7d | 0d |  |  |  |
| 16 | 1.1.1.3.3 | 创建人物初始化房屋和家具 | 2d? | 2010-03-24 | 2010-03-26 | 15 |  |  | 39.7d |  |  |  |  |
| 17 | 1.1.1.3.4 | 单元测试 | 1d? | 2010-03-23 A | 2010-03-24 A | 16 | 100% |  |  |  |  |  |  |
| 18 | 1.1.1.3.5 | 和客户端联调，对接 | 1d? | 2010-03-24 A | 2010-03-24 A | 17 | 100% |  |  |  |  |  |  |
| 19 | 1.1.1.4 | **数据同步系统** | 1d? | 2010-03-24 A | 2010-03-25 A | 13 | 100% |  |  |  |  |  |  |
| 20 | 1.1.1.4.1 | 网络协议设计 | 0.5d? | 2010-03-24 A | 2010-03-24 A |  | 100% |  |  |  |  |  |  |
| 21 | 1.1.1.4.2 | 和客户端联调对接 | 0.5d? | 2010-03-24 A | 2010-03-25 A | 20 | 100% |  |  |  |  |  |  |
| 22 | 1.1.1.5 | **个人房间** | 18.5d? | 2010-03-25 | 2010-04-19 | 19 |  |  | 9.2d | 8.2d |  |  |  |
| 23 | 1.1.1.5.1 | 房间属性设定 | 1d? | 2010-03-25 | 2010-03-26 |  |  |  | 8.2d | 0d |  |  |  |
| 24 | 1.1.1.5.2 | 房间数据同步 | 1d? | 2010-03-26 | 2010-03-29 | 23 |  |  | 8.2d | 0d |  |  |  |
| 25 | 1.1.1.5.3 | 数据库设定 | 1d? | 2010-03-29 | 2010-03-30 | 24 |  |  | 8.2d | 0d |  |  |  |
| 26 | 1.1.1.5.4 | 网络消息设定 | 2d? | 2010-03-30 | 2010-04-01 | 25 |  |  | 8.2d | 0d |  |  |  |
| 27 | 1.1.1.5.5 | 模板表定义，制作 | 1d? | 2010-04-01 | 2010-04-02 | 26 |  |  | 8.2d | 0d |  |  |  |
| 28 | 1.1.1.5.6 | 黑名单 | 2d? | 2010-04-02 | 2010-04-05 | 27 |  |  | 8.2d | 0d |  |  |  |
| 29 | 1.1.1.5.7 | 是否允许访问 | 0.5d? | 2010-04-05 | 2010-04-06 | 28 |  |  | 8.2d | 0d |  |  |  |
| 30 | 1.1.1.5.8 | 是否允许摆放家具 | 1d? | 2010-04-06 | 2010-04-07 | 29 |  |  | 8.2d | 0d |  |  |  |
| 31 | 1.1.1.5.9 | 单元测试 | 1d? | 2010-04-07 | 2010-04-08 | 30 |  |  | 8.2d | 0d |  |  |  |
| 32 | 1.1.1.5.10 | 物件数据存储 | 3d? | 2010-04-08 | 2010-04-13 | 31 |  |  | 8.2d | 0d |  |  |  |
| 33 | 1.1.1.5.11 | 家具摆放存储 | 3d? | 2010-04-13 | 2010-04-15 | 32 |  |  | 8.2d | 0d |  |  |  |
| 34 | 1.1.1.5.12 | 和客户端联调，对接 | 2d? | 2010-04-15 | 2010-04-19 | 33 |  |  | 8.2d |  |  |  |  |

| ID | WBS | Task | Duration | Start | Finish | Predecessors | Complete | Remaining | Total slack | Free slack | Constraint | Resources | Work | Actual work |
| --- | --- | --- | --- | --- | --- | --- | --- | --- | --- | --- | --- | --- | --- | --- |
| 35 | 1.1.1.6 | **物品系统** | 14d? | 2010-04-29 A | 2010-05-18 | 22 | 7% | 13d? | 0d |  |  |  |  |  |
| 36 | 1.1.1.6.1 | 物品表 | 1d? | 2010-04-29 A | 2010-04-30 A |  | 100% |  |  |  |  |  |  |  |
| 37 | 1.1.1.6.2 | 物品结构定定义 | 1d? | 2010-04-30 | 2010-05-03 | 36 |  |  | 0d |  |  |  |  |  |
| 38 | 1.1.1.6.3 | 物品系统架构 | 5d? | 2010-05-03 | 2010-05-10 | 37 |  |  | 0d |  |  |  |  |  |
| 39 | 1.1.1.6.4 | 物品使用 | 2d? | 2010-05-10 | 2010-05-11 | 38 |  |  | 0d |  |  |  |  |  |
| 40 | 1.1.1.6.5 | 服装物品 | 1d? | 2010-05-11 | 2010-05-12 | 39 |  |  | 0d |  |  |  |  |  |
| 41 | 1.1.1.6.6 | 家具物品 | 2d? | 2010-05-12 | 2010-05-14 | 40 |  |  | 0d |  |  |  |  |  |
| 42 | 1.1.1.6.7 | 单元测试 | 1d? | 2010-05-14 | 2010-05-17 | 41 |  |  | 0d |  |  |  |  |  |
| 43 | 1.1.1.6.8 | 和客户端联调对接 | 1d? | 2010-05-17 | 2010-05-18 | 42 |  |  | 0d |  |  |  |  |  |
| 44 | 1.1.2 | **洪锦旭** | 21.73d? | 2010-03-29 A | 2010-04-26 |  | 70% | 6.46d? | 17.17d |  |  |  | 84h | 61.5h |
| 45 | 1.1.2.1 | **数据库自动升级模块的修改** | 5.13d? | 2010-03-29 A | 2010-04-02 A |  | 100% |  |  |  |  |  |  |  |
| 46 | 1.1.2.1.1 | 代码编写 | 2d? | 2010-03-29 A | 2010-03-30 A | 34 | 100% |  |  |  |  |  |  |  |
| 47 | 1.1.2.1.2 | 单元测试 | 3d | 2010-03-31 A | 2010-04-02 A | 46 | 100% |  |  |  |  |  |  |  |
| 48 | 1.1.2.2 | 随机数, 时间相关函数 提供统一接口 | 2d? | 2010-04-06 A | 2010-04-07 A | 47, 45 | 100% |  |  |  | start no earlier than 2010-04-06 |  |  |  |
| 49 | 1.1.2.3 | **进入，退出家装处理** | 3d? | 2010-04-08 A | 2010-04-12 A | 48 | 100% |  |  |  |  |  |  |  |
| 50 | 1.1.2.3.1 | 进入家装将其它玩家踢回家 | 3d? | 2010-04-08 A | 2010-04-12 A |  | 100% |  |  |  |  |  |  |  |
| 51 | 1.1.2.4 | **场景系统** | 10.2d? | 2010-04-12 A | 2010-04-26 | 45, 49, 50 | 41% | 6d? | 17.17d |  |  |  | 84h | 61.5h |
| 52 | 1.1.2.4.1 | 场景切换 | 0.2d? | 2010-04-12 A | 2010-04-13 A |  | 100% |  |  |  |  | 洪锦旭 | 1.5h | 1.5h |
| 53 | 1.1.2.4.2 | **家园场景** | 4d? | 2010-04-13 A | 2010-04-16 A | 52 | 100% |  |  |  |  | 洪锦旭 | 60h | 60h |
| 54 | 1.1.2.4.2.1 | 家园场景的动态创建 | 1d? | 2010-04-13 A | 2010-04-14 A |  | 100% |  |  |  |  | 洪锦旭 | 7.5h | 7.5h |
| 55 | 1.1.2.4.2.2 | 家园场景的动态删除 | 1d? | 2010-04-14 A | 2010-04-14 A | 54 | 100% |  |  |  |  | 洪锦旭 | 7.5h | 7.5h |
| 56 | 1.1.2.4.2.3 | 进入家园场景的人数限制 | 1d? | 2010-04-15 A | 2010-04-15 A | 55 | 100% |  |  |  | start no earlier than 2010-04-12 | 洪锦旭 | 7.5h | 7.5h |
| 57 | 1.1.2.4.2.4 | 进入家园后，向客户端发送家园数据 | 1d? | 2010-04-15 A | 2010-04-16 A | 56 | 100% |  |  |  |  | 洪锦旭 | 7.5h | 7.5h |
| 58 | 1.1.2.4.3 | 公共场景 | 2d | 2010-04-16 | 2010-04-20 | 53 |  |  | 17.17d | 0d |  | 洪锦旭 | 15h |  |
| 59 | 1.1.2.4.4 | 和客户端联调，对接 | 3d | 2010-04-20 | 2010-04-23 | 58 |  |  | 17.17d | 0d | start no earlier than 2010-04-19 |  |  |  |

| ID | WBS | Task | Duration | Start | Finish | Predecessors | Total slack | Free slack | Resources | Work |
| --- | --- | --- | --- | --- | --- | --- | --- | --- | --- | --- |
| 60 | 1.1.2.4.5 | **寻路系统** | 1d? | 2010-04-23 | 2010-04-26 | 59 | 17.17d |  |  | 7.5h |
| 61 | 1.1.2.4.5.1 | 和客户端联调，对接 | 1d? | 2010-04-23 | 2010-04-26 |  | 17.17d |  | 洪锦旭 | 7.5h |
| 64 | 1.2 | **下一阶段alpha** | 17.07d? | 2010-03-10 | 2010-03-31 |  | 35.83d |  |  | 152h |
| 65 | 1.2.1 | **建筑模式（编辑）** | 1.07d? | 2010-03-10 | 2010-03-10 |  | 35.83d | 0d |  |  |
| 66 | 1.2.1.1 | 物件摆放 | 1.07d? | 2010-03-10 | 2010-03-10 |  | 35.83d |  |  |  |
| 67 | 1.2.1.2 | 家具摆放 | 1.07d? | 2010-03-10 | 2010-03-10 |  | 35.83d |  |  |  |
| 68 | 1.2.2 | **人物换装** | 1.07d? | 2010-03-11 | 2010-03-11 | 65 | 35.83d | 0d |  |  |
| 69 | 1.2.2.1 | 人物换装系统-体态 | 1.07d? | 2010-03-11 | 2010-03-11 |  | 35.83d |  |  |  |
| 70 | 1.2.2.2 | 人物换装系统-服装 | 1.07d? | 2010-03-11 | 2010-03-11 |  | 35.83d |  |  |  |
| 71 | 1.2.2.3 | 角色编辑器使用说明文档 | 1.07d? | 2010-03-11 | 2010-03-11 |  | 35.83d |  |  |  |
| 72 | 1.2.2.4 | 人物角色服装图量表 | 1.07d? | 2010-03-11 | 2010-03-11 |  | 35.83d |  |  |  |
| 73 | 1.2.2.5 | 衣橱说明及规划 | 1.07d? | 2010-03-11 | 2010-03-11 |  | 35.83d |  |  |  |
| 74 | 1.2.3 | **人物动作** | 1.07d? | 2010-03-12 | 2010-03-12 | 68 | 35.83d | 0d |  | 16h |
| 75 | 1.2.3.1 | 人物动作系统-自身动作 | 1.07d? | 2010-03-12 | 2010-03-12 |  | 35.83d |  | 符世龙 | 8h |
| 76 | 1.2.3.2 | 人物动作系统-自身动作（图量） | 1.07d? | 2010-03-12 | 2010-03-12 |  | 35.83d |  | 符世龙 | 8h |
| 77 | 1.2.4 | **场景物件系统** | 1.07d? | 2010-03-15 | 2010-03-15 | 74 | 35.83d | 0d |  | 16h |
| 78 | 1.2.4.1 | **家具动画** | 1.07d? | 2010-03-15 | 2010-03-15 |  | 35.83d |  |  | 8h |
| 79 | 1.2.4.1.1 | 家具动作 | 1.07d? | 2010-03-15 | 2010-03-15 |  | 35.83d |  | 翟翊 | 8h |
| 80 | 1.2.4.2 | **物件动画** | 1.07d? | 2010-03-15 | 2010-03-15 |  | 35.83d |  |  | 8h |
| 81 | 1.2.4.2.1 | 物件动画相关文档 | 1.07d? | 2010-03-15 | 2010-03-15 |  | 35.83d |  | 翟翊 | 8h |
| 82 | 1.2.5 | **登陆流程** | 1.07d? | 2010-03-16 | 2010-03-16 | 77 | 35.83d | 0d |  | 8h |
| 83 | 1.2.5.1 | 登陆流程（策划文档） | 1.07d? | 2010-03-16 | 2010-03-16 |  | 35.83d |  | 李柏晗 | 8h |
| 84 | 1.2.6 | **操作控制** | 1.07d? | 2010-03-17 | 2010-03-17 | 82 | 35.83d | 0d |  | 8h |
| 85 | 1.2.6.1 | 基础操作 | 1.07d? | 2010-03-17 | 2010-03-17 |  | 35.83d |  | 李柏晗 | 8h |

| ID | WBS | Task | Duration | Start | Finish | Predecessors | Total slack | Free slack | Resources | Work |
| --- | --- | --- | --- | --- | --- | --- | --- | --- | --- | --- |
| 86 | 1.2.7 | **聊天系统** | 1.07d? | 2010-03-18 | 2010-03-18 | 84 | 35.83d | 0d |  | 16h |
| 87 | 1.2.7.1 | 聊天系统-场景聊天 | 1.07d? | 2010-03-18 | 2010-03-18 |  | 35.83d |  | 符世龙 | 8h |
| 88 | 1.2.7.2 | 聊天系统-密语 | 1.07d? | 2010-03-18 | 2010-03-18 |  | 35.83d |  | 符世龙 | 8h |
| 89 | 1.2.8 | **NPC系统** | 1.07d? | 2010-03-19 | 2010-03-19 | 86 | 35.83d | 0d |  | 16h |
| 90 | 1.2.8.1 | **脚本** | 1.07d? | 2010-03-19 | 2010-03-19 |  | 35.83d |  |  | 16h |
| 91 | 1.2.8.1.1 | 对话脚本 | 1.07d? | 2010-03-19 | 2010-03-19 |  | 35.83d |  | 李柏晗 | 8h |
| 92 | 1.2.8.1.2 | 地图事件 | 1.07d? | 2010-03-19 | 2010-03-19 |  | 35.83d |  | 李柏晗 | 8h |
| 93 | 1.2.9 | **界面** | 1.07d? | 2010-03-22 | 2010-03-22 | 89 | 35.83d | 0d |  | 32h |
| 94 | 1.2.9.1 | 环行菜单 | 1.07d? | 2010-03-22 | 2010-03-22 |  | 35.83d |  | 符世龙 | 8h |
| 95 | 1.2.9.2 | 界面规划（策划文档） | 1.07d? | 2010-03-22 | 2010-03-22 |  | 35.83d |  | 李柏晗 | 8h |
| 96 | 1.2.9.3 | 界面规划（功能文档） | 1.07d? | 2010-03-22 | 2010-03-22 |  | 35.83d |  | 李柏晗 | 8h |
| 97 | 1.2.9.4 | 界面制作（策划部分） | 1.07d? | 2010-03-22 | 2010-03-22 |  | 35.83d |  | 李柏晗 | 8h |
| 98 | 1.2.10 | **路标系统** | 1.07d? | 2010-03-23 | 2010-03-23 | 93 | 35.83d | 0d |  | 8h |
| 99 | 1.2.10.1 | 路标系统相关文档 | 1.07d? | 2010-03-23 | 2010-03-23 |  | 35.83d |  | 李柏晗 | 8h |
| 100 | 1.2.11 | **玩家交易** | 1.07d? | 2010-03-24 | 2010-03-24 | 98 | 35.83d | 0d |  | 8h |
| 101 | 1.2.11.1 | 玩家交易相关文档 | 1.07d? | 2010-03-24 | 2010-03-24 |  | 35.83d |  | 符世龙 | 8h |
| 102 | 1.2.12 | **商店系统** | 1.07d? | 2010-03-25 | 2010-03-25 | 100 | 35.83d | 0d |  |  |
| 103 | 1.2.12.1 | 商店系统开发 | 1.07d? | 2010-03-25 | 2010-03-25 |  | 35.83d |  |  |  |
| 104 | 1.2.13 | **编辑器** | 1.07d? | 2010-03-26 | 2010-03-26 | 102 | 35.83d | 0d |  |  |
| 105 | 1.2.13.1 | 人物 | 1.07d? | 2010-03-26 | 2010-03-26 |  | 35.83d |  |  |  |
| 106 | 1.2.13.2 | 地图 | 1.07d? | 2010-03-26 | 2010-03-26 |  | 35.83d |  |  |  |
| 107 | 1.2.13.3 | 房屋 | 1.07d? | 2010-03-26 | 2010-03-26 |  | 35.83d |  |  |  |
| 108 | 1.2.13.4 | 物件 | 1.07d? | 2010-03-26 | 2010-03-26 |  | 35.83d |  |  |  |
| 109 | 1.2.14 | **系统设置** | 1.07d? | 2010-03-29 | 2010-03-29 | 104 | 35.83d | 0d |  | 8h |
| 110 | 1.2.14.1 | 画面设置 | 1.07d? | 2010-03-29 | 2010-03-29 |  | 35.83d |  | 符世龙 | 8h |

| ID | WBS | Task | Duration | Start | Finish | Predecessors | Total slack | Free slack | Resources | Work |
| --- | --- | --- | --- | --- | --- | --- | --- | --- | --- | --- |
| 111 | 1.2.15 | **商城系统** | 1.07d? | 2010-03-30 | 2010-03-30 | 109 | 35.83d | 0d |  | 8h |
| 112 | 1.2.15.1 | 商城系统功能相关文档 | 1.07d? | 2010-03-30 | 2010-03-30 |  | 35.83d |  | 李柏晗 | 8h |
| 113 | 1.2.16 | **好友系统** | 1.07d? | 2010-03-31 | 2010-03-31 | 111 | 35.83d |  |  | 8h |
| 114 | 1.2.16.1 | 好友系统相关文档 | 1.07d? | 2010-03-31 | 2010-03-31 |  | 35.83d |  | 符世龙 | 8h |
