# 0.30版本进度

Schedule from MS Project, 2010-05-17 to 2010-09-02.
微软中国

## Calendars

- 标准: Mon-Fri 08:00-12:00, 13:00-17:00; Sat-Sun off.

## Resources

| Resource |
| --- |
| 李柏晗 |
| 完成 |
| 未完成 |
| 符世龙 |
| 翟翊 |

## Schedule

| ID | WBS | Task | Duration | Start | Finish | Predecessors | Total slack | Free slack | Constraint | Work |
| --- | --- | --- | --- | --- | --- | --- | --- | --- | --- | --- |
| 1 | 1 | **alpha2** | 79d? | 2010-05-17 | 2010-09-02 |  | 0d |  |  | 124h |
| 2 | 1.1 | **服务端** | 51.5d? | 2010-05-17 | 2010-07-27 |  | 27.5d |  |  | 124h |
| 3 | 1.1.1 | **林艺杰** | 44.5d? | 2010-05-18 | 2010-07-19 |  | 33.5d |  |  | 56h |
| 4 | 1.1.1.1 | **节点间通讯** | 3d? | 2010-05-18 | 2010-05-20 |  | 31.5d | 0d |  |  |
| 5 | 1.1.1.1.1 | 分布式运算封装 | 3d? | 2010-05-18 | 2010-05-20 |  | 31.5d |  | start no earlier than 2010-05-18 |  |
| 6 | 1.1.1.2 | **通用邀请流程** | 6d? | 2010-05-21 | 2010-05-28 | 4 | 31.5d | 0d |  |  |
| 7 | 1.1.1.2.1 | 邀请框架设定 | 0.5d? | 2010-05-21 | 2010-05-21 |  | 6d | 0d |  |  |
| 8 | 1.1.1.2.2 | 发起方开始邀请(类型，参数) | 0.5d? | 2010-05-21 | 2010-05-21 | 7 | 6d | 0d |  |  |
| 9 | 1.1.1.2.3 | 邀请的进程的开始及结束 | 0.5d? | 2010-05-24 | 2010-05-24 | 8 | 6d | 0d |  |  |
| 10 | 1.1.1.2.4 | 接收方答应请求处理 | 0.5d? | 2010-05-24 | 2010-05-24 | 9 | 6d | 0d |  |  |
| 11 | 1.1.1.2.5 | 接收方拒绝请求 | 0.5d? | 2010-05-25 | 2010-05-25 | 10 | 6d | 0d |  |  |
| 12 | 1.1.1.2.6 | 发起方中途取消邀请 | 0.5d? | 2010-05-25 | 2010-05-25 | 11 | 6d | 0d |  |  |
| 13 | 1.1.1.2.7 | 超时邀请进程处理 | 0.5d? | 2010-05-26 | 2010-05-26 | 12 | 6d | 0d |  |  |
| 14 | 1.1.1.2.8 | 成功邀请后，通知双方做具体的处理 | 0.5d? | 2010-05-26 | 2010-05-26 | 13 | 6d | 0d |  |  |
| 15 | 1.1.1.2.9 | 接收方没空,不在线相关处理 | 0.5d? | 2010-05-27 | 2010-05-27 | 14 | 6d | 0d |  |  |
| 16 | 1.1.1.2.10 | 客户端联调 | 1.5d? | 2010-05-27 | 2010-05-28 | 15 | 6d |  |  |  |
| 17 | 1.1.1.3 | **单元测试** | 4d? | 2010-05-31 | 2010-06-03 | 6 | 31.5d | 0d |  |  |
| 18 | 1.1.1.3.1 | 单元测试框架 | 4d? | 2010-05-31 | 2010-06-03 |  | 6d |  |  |  |
| 19 | 1.1.1.4 | **货币系统** | 3d? | 2010-06-04 | 2010-06-08 | 17 | 31.5d | 0d |  |  |
| 20 | 1.1.1.4.1 | 数据库 | 0.5d? | 2010-06-04 | 2010-06-04 |  | 6d | 0d |  |  |
| 21 | 1.1.1.4.2 | 网络 | 0.5d? | 2010-06-04 | 2010-06-04 | 20 | 6d | 0d |  |  |
| 22 | 1.1.1.4.3 | 相应逻辑功能 | 1d? | 2010-06-07 | 2010-06-07 | 21 | 6d | 0d |  |  |
| 23 | 1.1.1.4.4 | 和客户端联调对接 | 1d? | 2010-06-08 | 2010-06-08 | 22 | 6d |  |  |  |
| 24 | 1.1.1.5 | **商城系统** | 12.5d? | 2010-06-09 | 2010-06-25 | 19 | 31.5d | 0d |  |  |
| 25 | 1.1.1.5.1 | 和策划,客户端沟通 | 1d? | 2010-06-09 | 2010-06-09 |  | 6d | 0d |  |  |
| 26 | 1.1.1.5.2 | 商城系统表格定义 | 1d? | 2010-06-10 | 2010-06-10 | 25 | 6d | 0d |  |  |
| 27 | 1.1.1.5.3 | 商城买卖 | 2d? | 2010-06-11 | 2010-06-14 | 26 | 6d | 0d |  |  |
| 28 | 1.1.1.5.4 | 消费记录 | 1.5d? | 2010-06-15 | 2010-06-16 | 27 | 6d | 0d |  |  |
| 29 | 1.1.1.5.5 | 推荐商品 | 1d? | 2010-06-16 | 2010-06-17 | 28 | 6d | 0d |  |  |
| 30 | 1.1.1.5.6 | 商城公告 | 1d? | 2010-06-17 | 2010-06-18 | 29 | 6d | 0d |  |  |
| 31 | 1.1.1.5.7 | 商品分类 | 1d? | 2010-06-18 | 2010-06-21 | 30 | 6d | 0d |  |  |
| 32 | 1.1.1.5.8 | 网络协议定义 | 1d? | 2010-06-21 | 2010-06-22 | 31 | 6d | 0d |  |  |
| 33 | 1.1.1.5.9 | 数据库 | 1d? | 2010-06-22 | 2010-06-23 | 32 | 6d | 0d |  |  |
| 34 | 1.1.1.5.10 | 和客户端联调对接 | 2d? | 2010-06-23 | 2010-06-25 | 33 | 6d |  |  |  |

| ID | WBS | Task | Duration | Start | Finish | Predecessors | Total slack | Free slack | Constraint | Resources | Work |
| --- | --- | --- | --- | --- | --- | --- | --- | --- | --- | --- | --- |
| 35 | 1.1.1.6 | **物品系统** | 8d? | 2010-06-25 | 2010-07-07 | 24 | 31.5d | 0d |  |  |  |
| 36 | 1.1.1.6.1 | 和策划,客户端沟通 | 1d? | 2010-06-25 | 2010-06-28 |  | 6d | 0d |  |  |  |
| 37 | 1.1.1.6.2 | 物品堆叠 | 1d? | 2010-06-28 | 2010-06-29 | 36 | 6d | 0d |  |  |  |
| 38 | 1.1.1.6.3 | 洗手池 | 1d? | 2010-06-29 | 2010-06-30 | 37 | 6d | 0d |  |  |  |
| 39 | 1.1.1.6.4 | 浴室（浴缸） | 1d? | 2010-06-30 | 2010-07-01 | 38 | 6d | 0d |  |  |  |
| 40 | 1.1.1.6.5 | 吸尘器 | 1d? | 2010-07-01 | 2010-07-02 | 39 | 6d | 0d |  |  |  |
| 41 | 1.1.1.6.6 | 梳妆台类 | 1d? | 2010-07-02 | 2010-07-05 | 40 | 6d | 0d |  |  |  |
| 42 | 1.1.1.6.7 | 可以影响玩家属性的物品 | 1d? | 2010-07-05 | 2010-07-06 | 41 | 6d | 0d |  |  |  |
| 43 | 1.1.1.6.8 | 家具动作广播 | 1d? | 2010-07-06 | 2010-07-07 | 42 | 6d |  |  |  |  |
| 44 | 1.1.1.7 | **寻路系统** | 1d? | 2010-07-07 | 2010-07-08 | 35 | 31.5d | 0d |  |  |  |
| 45 | 1.1.1.7.1 | 寻路系统细节调整 | 1d? | 2010-07-07 | 2010-07-08 |  | 6d |  |  |  |  |
| 46 | 1.1.1.8 | **商店系统(没有策划案)** | 7d? | 2010-07-08 | 2010-07-19 | 44 | 31.5d |  |  | 李柏晗 | 56h |
| 47 | 1.1.1.8.1 | 和策划,客户端沟通 | 1d? | 2010-07-08 | 2010-07-09 |  | 6d | 0d |  |  |  |
| 48 | 1.1.1.8.2 | 制作 | 3d? | 2010-07-09 | 2010-07-14 | 47 | 6d | 0d |  |  |  |
| 49 | 1.1.1.8.3 | 网络协议定义 | 1d? | 2010-07-14 | 2010-07-15 | 48 | 6d | 0d |  |  |  |
| 50 | 1.1.1.8.4 | 数据库 | 1d? | 2010-07-15 | 2010-07-16 | 49 | 6d | 0d |  |  |  |
| 51 | 1.1.1.8.5 | 和客户端联调对接 | 1d? | 2010-07-16 | 2010-07-19 | 50 | 6d |  |  |  |  |
| 52 | 1.1.2 | **洪锦旭** | 51.5d? | 2010-05-17 | 2010-07-27 |  | 27.5d |  |  |  |  |
| 53 | 1.1.2.1 | **好友系统** | 3d? | 2010-05-17 | 2010-05-19 |  | 27.5d | 0d |  |  |  |
| 54 | 1.1.2.1.1 | 增删好友处理 | 0.5d? | 2010-05-17 | 2010-05-17 |  | 27.5d | 0d | start no earlier than 2010-05-17 |  |  |
| 55 | 1.1.2.1.2 | 好友上线下线通知 | 0.5d? | 2010-05-17 | 2010-05-17 | 54 | 27.5d | 0d | start no earlier than 2010-05-17 |  |  |
| 56 | 1.1.2.1.3 | 好友邀请进房间处理 | 1d? | 2010-05-18 | 2010-05-18 | 55 | 27.5d | 0d |  |  |  |
| 57 | 1.1.2.1.4 | 测试,客户端联调 | 1d? | 2010-05-19 | 2010-05-19 | 56 | 27.5d |  |  |  |  |
| 58 | 1.1.2.2 | **人物动作互斥系统框架** | 11d? | 2010-05-20 | 2010-06-03 | 53 | 27.5d | 0d |  |  |  |
| 59 | 1.1.2.2.1 | 考虑框架各个细节如何实现 | 1d? | 2010-05-20 | 2010-05-20 |  | 27.5d | 0d |  |  |  |
| 60 | 1.1.2.2.2 | 定协议 | 0.5d? | 2010-05-21 | 2010-05-21 | 59 | 27.5d | 0d |  |  |  |
| 61 | 1.1.2.2.3 | xml加载 | 1d? | 2010-05-21 | 2010-05-24 | 60 | 27.5d | 0d |  |  |  |
| 62 | 1.1.2.2.4 | 开始某个动作处理 | 0.5d? | 2010-05-24 | 2010-05-24 | 61 | 27.5d | 0d |  |  |  |
| 63 | 1.1.2.2.5 | 结束某个动作处理 | 0.5d? | 2010-05-25 | 2010-05-25 | 62 | 27.5d | 0d |  |  |  |
| 64 | 1.1.2.2.6 | 是否允许某个动作判断 | 1d? | 2010-05-25 | 2010-05-26 | 63 | 27.5d | 0d |  |  |  |
| 65 | 1.1.2.2.7 | 允许多个动作并存处理 | 0.5d? | 2010-05-26 | 2010-05-26 | 64 | 27.5d | 0d |  |  |  |
| 66 | 1.1.2.2.8 | 动作强制替换处理(通知?) | 1d? | 2010-05-27 | 2010-05-27 | 65 | 27.5d | 0d |  |  |  |
| 67 | 1.1.2.2.9 | 下线清除各种动作处理 | 0.5d? | 2010-05-28 | 2010-05-28 | 66 | 27.5d | 0d |  |  |  |
| 68 | 1.1.2.2.10 | 人物保存各个动作状态 | 0.5d? | 2010-05-28 | 2010-05-28 | 67 | 27.5d | 0d |  |  |  |
| 69 | 1.1.2.2.11 | 动作自动结束及手动结束处理 | 0.5d? | 2010-05-31 | 2010-05-31 | 68 | 27.5d | 0d |  |  |  |
| 70 | 1.1.2.2.12 | 无法进行某项动作, 通知客户端 | 0.5d? | 2010-05-31 | 2010-05-31 | 69 | 27.5d | 0d |  |  |  |
| 71 | 1.1.2.2.13 | 修改原先的一些动作, 使之并入动作系统 | 1d? | 2010-06-01 | 2010-06-01 | 70 | 27.5d | 0d |  |  |  |
| 72 | 1.1.2.2.14 | 测试，与客户端联调 | 2d? | 2010-06-02 | 2010-06-03 | 71 | 27.5d |  |  |  |  |

Notes:
- 54: 策划文档已经完成，程序功能需求文档暂时未定。

| ID | WBS | Task | Duration | Start | Finish | Predecessors | Total slack | Free slack | Constraint |
| --- | --- | --- | --- | --- | --- | --- | --- | --- | --- |
| 73 | 1.1.2.3 | **玩家交易** | 7d? | 2010-06-04 | 2010-06-14 | 58 | 27.5d | 0d |  |
| 74 | 1.1.2.3.1 | 和策划,客户端沟通 | 1d? | 2010-06-04 | 2010-06-04 |  | 27.5d | 0d |  |
| 75 | 1.1.2.3.2 | 网络协议定义 | 1d? | 2010-06-07 | 2010-06-07 | 74 | 27.5d | 0d |  |
| 76 | 1.1.2.3.3 | 交易界面数据 | 1d? | 2010-06-08 | 2010-06-08 | 75 | 27.5d | 0d |  |
| 77 | 1.1.2.3.4 | 交易数据同步 | 1d? | 2010-06-09 | 2010-06-09 | 76 | 27.5d | 0d |  |
| 78 | 1.1.2.3.5 | 数据库 | 1d? | 2010-06-10 | 2010-06-10 | 77 | 27.5d | 0d |  |
| 79 | 1.1.2.3.6 | 和客户端联调对接 | 2d? | 2010-06-11 | 2010-06-14 | 78 | 27.5d |  |  |
| 80 | 1.1.2.4 | **人物动作** | 6d? | 2010-06-15 | 2010-06-22 | 73 | 27.5d | 0d |  |
| 81 | 1.1.2.4.1 | 看策划案，与策划沟通 | 1d? | 2010-06-15 | 2010-06-15 |  | 27.5d | 0d |  |
| 82 | 1.1.2.4.2 | 定xml | 0.5d? | 2010-06-16 | 2010-06-16 | 81 | 27.5d | 0d |  |
| 83 | 1.1.2.4.3 | 定协议 | 0.5d? | 2010-06-16 | 2010-06-16 | 82 | 27.5d | 0d |  |
| 84 | 1.1.2.4.4 | 人与物互动 | 1d? | 2010-06-17 | 2010-06-17 | 83 | 27.5d | 0d |  |
| 85 | 1.1.2.4.5 | 人与人互动 | 2d? | 2010-06-18 | 2010-06-21 | 84 | 27.5d | 0d |  |
| 86 | 1.1.2.4.6 | 与客户端联调 | 1d? | 2010-06-22 | 2010-06-22 | 85 | 27.5d |  |  |
| 87 | 1.1.2.5 | **个人房间** | 7d? | 2010-06-23 | 2010-07-01 | 80 | 27.5d | 0d |  |
| 88 | 1.1.2.5.1 | **房屋属性** | 7d? | 2010-06-23 | 2010-07-01 |  | 27.5d |  |  |
| 89 | 1.1.2.5.1.1 | 定xml | 1d? | 2010-06-23 | 2010-06-23 |  | 27.5d | 0d | start no earlier than 2010-05-04 |
| 90 | 1.1.2.5.1.2 | 黑名单 | 1d? | 2010-06-24 | 2010-06-24 | 89 | 27.5d | 0d |  |
| 91 | 1.1.2.5.1.3 | 来客访问权限 | 1d? | 2010-06-25 | 2010-06-25 | 90 | 27.5d | 0d |  |
| 92 | 1.1.2.5.1.4 | 来客访问记录 | 2d? | 2010-06-28 | 2010-06-29 | 91 | 27.5d | 0d |  |
| 93 | 1.1.2.5.1.5 | 与客户端联调 | 2d? | 2010-06-30 | 2010-07-01 | 92 | 27.5d |  |  |
| 94 | 1.1.2.6 | **奴隶系统** | 6d? | 2010-07-02 | 2010-07-09 | 87 | 27.5d | 0d |  |
| 95 | 1.1.2.6.1 | 看策划案，与策划沟通 | 0.5d? | 2010-07-02 | 2010-07-02 |  | 27.5d | 0d |  |
| 96 | 1.1.2.6.2 | 定xml | 0.5d? | 2010-07-02 | 2010-07-02 | 95 | 27.5d | 0d |  |
| 97 | 1.1.2.6.3 | 买卖, 派遣协议 | 1d? | 2010-07-05 | 2010-07-05 | 96 | 27.5d | 0d |  |
| 98 | 1.1.2.6.4 | 买卖逻辑处理 | 1d? | 2010-07-06 | 2010-07-06 | 97 | 27.5d | 0d |  |
| 99 | 1.1.2.6.5 | 派遣处理 | 1d? | 2010-07-07 | 2010-07-07 | 98 | 27.5d | 0d |  |
| 100 | 1.1.2.6.6 | 与客户端联调 | 2d? | 2010-07-08 | 2010-07-09 | 99 | 27.5d |  |  |

| ID | WBS | Task | Duration | Start | Finish | Predecessors | Total slack | Free slack | Constraint | Work |
| --- | --- | --- | --- | --- | --- | --- | --- | --- | --- | --- |
| 101 | 1.1.2.7 | **打工系统(没有策划案)** | 4d? | 2010-07-12 | 2010-07-15 | 94 | 27.5d | 0d |  |  |
| 102 | 1.1.2.7.1 | 和策划,客户端沟通 | 1d? | 2010-07-12 | 2010-07-12 |  | 27.5d | 0d |  |  |
| 103 | 1.1.2.7.2 | 网络协议 | 1d? | 2010-07-13 | 2010-07-13 | 102 | 27.5d | 0d |  |  |
| 104 | 1.1.2.7.3 | 数据库 | 1d? | 2010-07-14 | 2010-07-14 | 103 | 27.5d | 0d |  |  |
| 105 | 1.1.2.7.4 | 和客户端联调对接 | 1d? | 2010-07-15 | 2010-07-15 | 104 | 27.5d |  |  |  |
| 106 | 1.1.2.8 | **玩家信息查看** | 7.5d? | 2010-07-16 | 2010-07-27 | 101 | 27.5d |  |  |  |
| 107 | 1.1.2.8.1 | 看策划案，与策划沟通 | 0.5d? | 2010-07-16 | 2010-07-16 |  | 27.5d | 0d |  |  |
| 108 | 1.1.2.8.2 | 定xml | 0.5d? | 2010-07-16 | 2010-07-16 | 107 | 27.5d | 0d |  |  |
| 109 | 1.1.2.8.3 | 定协议 | 0.5d? | 2010-07-19 | 2010-07-19 | 108 | 27.5d | 0d |  |  |
| 110 | 1.1.2.8.4 | 查看其他玩家信息 | 1d? | 2010-07-19 | 2010-07-20 | 109 | 27.5d | 0d |  |  |
| 111 | 1.1.2.8.5 | 查看玩家的个人信息 | 2d? | 2010-07-20 | 2010-07-22 | 110 | 27.5d | 0d |  |  |
| 112 | 1.1.2.8.6 | 玩家相册 | 1d? | 2010-07-22 | 2010-07-23 | 111 | 27.5d | 0d |  |  |
| 113 | 1.1.2.8.7 | 与客户端联调 | 2d? | 2010-07-23 | 2010-07-27 | 112 | 27.5d |  |  |  |
| 114 | 1.1.3 | **林艺斌** | 46.5d? | 2010-05-17 | 2010-07-20 |  | 32.5d |  |  | 68h |
| 115 | 1.1.3.1 | **NPC系统** | 3.5d? | 2010-05-17 | 2010-05-20 |  | 30.5d | 0d |  |  |
| 116 | 1.1.3.1.1 | 和策划,客户端沟通 | 1d? | 2010-05-17 | 2010-05-17 |  | 5d | 0d | start no earlier than 2010-05-17 |  |
| 117 | 1.1.3.1.2 | 场景进程监控树修改 | 1d? | 2010-05-18 | 2010-05-18 | 116 | 5d | 0d |  |  |
| 118 | 1.1.3.1.3 | 和客户端联调对接 | 1.5d | 2010-05-19 | 2010-05-20 | 117 | 5d |  |  |  |
| 119 | 1.1.3.2 | **人物等级** | 4.5d? | 2010-05-20 | 2010-05-26 | 115 | 30.5d | 0d |  |  |
| 120 | 1.1.3.2.1 | 和策划,客户端沟通 | 1d | 2010-05-20 | 2010-05-21 |  | 5d | 0d |  |  |
| 121 | 1.1.3.2.2 | 网络协议定义 | 0.5d | 2010-05-21 | 2010-05-21 | 120 | 5d | 0d |  |  |
| 122 | 1.1.3.2.3 | 自动更新在线时长 | 0.25d | 2010-05-24 | 2010-05-24 | 121 | 5d | 0d |  |  |
| 123 | 1.1.3.2.4 | 玩家退出时更新在线时长 | 0.25d | 2010-05-24 | 2010-05-24 | 122 | 5d | 0d |  |  |
| 124 | 1.1.3.2.5 | 根据时长显示等级 | 0.5d | 2010-05-24 | 2010-05-24 | 123 | 5d | 0d |  |  |
| 125 | 1.1.3.2.6 | 数据库 | 1d? | 2010-05-25 | 2010-05-25 | 124 | 5d | 0d |  |  |
| 126 | 1.1.3.2.7 | 和客户端联调对接 | 1d | 2010-05-26 | 2010-05-26 | 125 | 5d |  |  |  |

| ID | WBS | Task | Duration | Start | Finish | Predecessors | Total slack | Free slack | Resources | Work |
| --- | --- | --- | --- | --- | --- | --- | --- | --- | --- | --- |
| 127 | 1.1.3.3 | **人物属性** | 9.5d? | 2010-05-27 | 2010-06-09 | 119 | 30.5d | 0d |  |  |
| 128 | 1.1.3.3.1 | 和策划,客户端沟通 | 1d? | 2010-05-27 | 2010-05-27 |  | 5d | 0d |  |  |
| 129 | 1.1.3.3.2 | 网络协议定义 | 1d | 2010-05-28 | 2010-05-28 | 128 | 5d | 0d |  |  |
| 130 | 1.1.3.3.3 | 数据结构的定义 | 1d | 2010-05-31 | 2010-05-31 | 129 | 5d | 0d |  |  |
| 131 | 1.1.3.3.4 | 系统时间对人物属性的影响 | 1d? | 2010-06-01 | 2010-06-01 | 130 | 5d | 0d |  |  |
| 132 | 1.1.3.3.5 | 道具对人物属性的影响 | 1d? | 2010-06-02 | 2010-06-02 | 131 | 5d | 0d |  |  |
| 133 | 1.1.3.3.6 | 行为对人物属性的影响 | 1.5d | 2010-06-03 | 2010-06-04 | 132 | 5d | 0d |  |  |
| 134 | 1.1.3.3.7 | 数据库 | 1d? | 2010-06-04 | 2010-06-07 | 133 | 5d | 0d |  |  |
| 135 | 1.1.3.3.8 | 和客户端联调对接 | 2d | 2010-06-07 | 2010-06-09 | 134 | 5d |  |  |  |
| 136 | 1.1.3.4 | **邮件系统** | 7.5d? | 2010-06-09 | 2010-06-18 | 127 | 30.5d | 0d |  |  |
| 137 | 1.1.3.4.1 | 和策划,客户端沟通 | 1d? | 2010-06-09 | 2010-06-10 |  | 5d | 0d |  |  |
| 138 | 1.1.3.4.2 | 网络协议定义 | 1d? | 2010-06-10 | 2010-06-11 | 137 | 5d | 0d |  |  |
| 139 | 1.1.3.4.3 | 数据库 | 1d? | 2010-06-11 | 2010-06-14 | 138 | 5d | 0d |  |  |
| 140 | 1.1.3.4.4 | 发送，回复邮件 | 1d? | 2010-06-14 | 2010-06-15 | 139 | 5d | 0d |  |  |
| 141 | 1.1.3.4.5 | 阅读邮件，金币发送 | 1d? | 2010-06-15 | 2010-06-16 | 140 | 5d | 0d |  |  |
| 142 | 1.1.3.4.6 | 自动删除邮件 | 0.5d? | 2010-06-16 | 2010-06-16 | 141 | 5d | 0d |  |  |
| 143 | 1.1.3.4.7 | 和客户端联调对接 | 1d? | 2010-06-17 | 2010-06-17 | 142 | 5d | 0d |  |  |
| 144 | 1.1.3.4.8 | 单元测试 | 1d? | 2010-06-18 | 2010-06-18 | 143 | 5d |  |  |  |
| 145 | 1.1.3.5 | **家政系统(没有策划案)** | 5.5d? | 2010-06-21 | 2010-06-28 | 136 | 30.5d | 0d | 翟翊 | 44h |
| 146 | 1.1.3.5.1 | 和策划沟通功能点 | 0.5d? | 2010-06-21 | 2010-06-21 |  | 5d | 0d |  |  |
| 147 | 1.1.3.5.2 | 功能制作 | 2d? | 2010-06-21 | 2010-06-23 | 146 | 5d | 0d |  |  |
| 148 | 1.1.3.5.3 | 协议定义 | 1d? | 2010-06-23 | 2010-06-24 | 147 | 5d | 0d |  |  |
| 149 | 1.1.3.5.4 | 数据库定义 | 1d? | 2010-06-24 | 2010-06-25 | 148 | 5d | 0d |  |  |
| 150 | 1.1.3.5.5 | 和客户端联调,对接 | 1d? | 2010-06-25 | 2010-06-28 | 149 | 5d |  |  |  |

| ID | WBS | Task | Duration | Start | Finish | Predecessors | Total slack | Free slack | Constraint | Resources | Work |
| --- | --- | --- | --- | --- | --- | --- | --- | --- | --- | --- | --- |
| 151 | 1.1.3.6 | **系统设置(没有策划案)** | 3d? | 2010-06-28 | 2010-07-01 | 145 | 30.5d | 0d |  |  |  |
| 152 | 1.1.3.6.1 | 画面设置 | 0.5d? | 2010-06-28 | 2010-06-28 |  | 5d | 0d |  |  |  |
| 153 | 1.1.3.6.2 | 音效设定 | 0.5d? | 2010-06-29 | 2010-06-29 | 152 | 5d | 0d |  |  |  |
| 154 | 1.1.3.6.3 | 协议定义 | 0.5d? | 2010-06-29 | 2010-06-29 | 153 | 5d | 0d |  |  |  |
| 155 | 1.1.3.6.4 | 数据库定义 | 0.5d? | 2010-06-30 | 2010-06-30 | 154 | 5d | 0d |  |  |  |
| 156 | 1.1.3.6.5 | 和客户端联调,对接 | 1d? | 2010-06-30 | 2010-07-01 | 155 | 5d |  |  |  |  |
| 157 | 1.1.3.7 | **美容院功能(没有策划案)** | 6d? | 2010-07-01 | 2010-07-09 | 151 | 30.5d | 0d |  |  |  |
| 158 | 1.1.3.7.1 | 功能开发 | 4d? | 2010-07-01 | 2010-07-07 |  | 5d | 0d |  |  |  |
| 159 | 1.1.3.7.2 | 数据库 | 1d? | 2010-07-07 | 2010-07-08 | 158 | 5d | 0d |  |  |  |
| 160 | 1.1.3.7.3 | 和客户端联调 | 1d? | 2010-07-08 | 2010-07-09 | 159 | 5d |  |  |  |  |
| 161 | 1.1.3.8 | **帮助系统(没有策划案)** | 7d? | 2010-07-09 | 2010-07-20 | 157 | 30.5d |  |  |  | 24h |
| 162 | 1.1.3.8.1 | **新手教学流程（策划文档）** | 3d? | 2010-07-09 | 2010-07-14 |  | 30.5d | 0d |  | 李柏晗 | 24h |
| 163 | 1.1.3.8.1.1 | 程序制作开发 | 2d? | 2010-07-09 | 2010-07-13 |  | 5d | 0d |  |  |  |
| 164 | 1.1.3.8.1.2 | 和客户端联调 | 1d? | 2010-07-13 | 2010-07-14 | 163 | 5d |  |  |  |  |
| 165 | 1.1.3.8.2 | **新手引导** | 4d? | 2010-07-14 | 2010-07-20 | 162 | 30.5d |  |  |  |  |
| 166 | 1.1.3.8.2.1 | 程序制作开发 | 3d? | 2010-07-14 | 2010-07-19 |  | 5d | 0d |  |  |  |
| 167 | 1.1.3.8.2.2 | 和客户端联调 | 1d? | 2010-07-19 | 2010-07-20 | 166 | 5d |  |  |  |  |
| 168 | 1.2 | **客户端** | 79d? | 2010-05-17 | 2010-09-02 |  | 0d |  |  |  |  |
| 169 | 1.2.1 | **颜毅赟** | 28d | 2010-05-17 | 2010-06-23 |  | 51d |  |  |  |  |
| 170 | 1.2.1.1 | **室外地形编辑** | 24d | 2010-05-17 | 2010-06-17 |  | 51d | 0d |  |  |  |
| 171 | 1.2.1.1.1 | 学习其他编辑器代码的制作方式 | 4d | 2010-05-17 | 2010-05-20 |  | 51d | 0d | start no earlier than 2010-05-17 |  |  |
| 172 | 1.2.1.1.2 | 把我们目前的房屋场景与室外场景统一 | 4d | 2010-05-21 | 2010-05-26 | 171 | 51d | 0d |  |  |  |
| 173 | 1.2.1.1.3 | 室外场景的设计初步 | 3d | 2010-05-27 | 2010-05-31 | 172 | 51d | 0d |  |  |  |
| 174 | 1.2.1.1.4 | 编辑器的界面设计 | 4d | 2010-06-01 | 2010-06-04 | 173 | 51d | 0d |  |  |  |
| 175 | 1.2.1.1.5 | 地形编辑的编码 | 6d | 2010-06-07 | 2010-06-14 | 174 | 51d | 0d |  |  |  |
| 176 | 1.2.1.1.6 | 地形编辑的调试和测试 | 3d | 2010-06-15 | 2010-06-17 | 175 | 51d |  |  |  |  |
| 177 | 1.2.1.2 | 输入系统需要一个事件机制 | 1.5d | 2010-06-18 | 2010-06-21 | 170 | 51d | 0d |  |  |  |
| 178 | 1.2.1.3 | 监督和协调美术策划的材质脚本制作情况 | 2d | 2010-06-21 | 2010-06-23 | 177 | 51d | 0d |  |  |  |
| 179 | 1.2.1.4 | 把luabind放到pch来加快速度, 把luabind移出工程 | 0.5d | 2010-06-23 | 2010-06-23 | 178 | 51d |  |  |  |  |

| ID | WBS | Task | Duration | Start | Finish | Predecessors | Total slack | Free slack | Constraint |
| --- | --- | --- | --- | --- | --- | --- | --- | --- | --- |
| 180 | 1.2.2 | **张文欣** | 20d? | 2010-05-18 | 2010-06-14 |  | 58d |  |  |
| 181 | 1.2.2.1 | **npc系统** | 5d? | 2010-05-18 | 2010-05-24 |  | 58d | 0d |  |
| 182 | 1.2.2.1.1 | 和服务器沟通 | 1d? | 2010-05-18 | 2010-05-18 |  | 58d | 0d | start no earlier than 2010-05-18 |
| 183 | 1.2.2.1.2 | NPC框架 | 1d | 2010-05-19 | 2010-05-19 | 182 | 58d | 0d |  |
| 184 | 1.2.2.1.3 | 网络消息协议 | 1d? | 2010-05-20 | 2010-05-20 | 183 | 58d | 0d |  |
| 185 | 1.2.2.1.4 | NPC对话与显示 | 1d | 2010-05-21 | 2010-05-21 | 184 | 58d | 0d |  |
| 186 | 1.2.2.1.5 | 服务器联调 | 1d | 2010-05-24 | 2010-05-24 | 185 | 58d |  |  |
| 187 | 1.2.2.2 | **人物属性(包含人物行为规则判定客户端实现, 也包括行为同步, 人物等级)** | 7d | 2010-05-25 | 2010-06-02 | 181 | 58d | 0d |  |
| 188 | 1.2.2.2.1 | 和服务器沟通 | 1d | 2010-05-25 | 2010-05-25 |  | 58d | 0d |  |
| 189 | 1.2.2.2.2 | 框架 | 1d | 2010-05-26 | 2010-05-26 | 188 | 58d | 0d |  |
| 190 | 1.2.2.2.3 | 网络消息协议 | 1d | 2010-05-27 | 2010-05-27 | 189 | 58d | 0d |  |
| 191 | 1.2.2.2.4 | 人物行为规则判定, 行为同步, 人物等级 | 2d | 2010-05-28 | 2010-05-31 | 190 | 58d | 0d |  |
| 192 | 1.2.2.2.5 | 服务器联调 | 2d | 2010-06-01 | 2010-06-02 | 191 | 58d | 0d |  |
| 193 | 1.2.2.3 | **移除#[lua_scripts] [layouts] [imagesets] [fonts] [schemes] [looknfeels]的路径** | 1d? | 2010-06-03 | 2010-06-03 | 181, 187, 192 | 58d | 0d |  |
| 194 | 1.2.2.3.1 | 移除 | 1d? | 2010-06-03 | 2010-06-03 |  | 58d |  |  |
| 195 | 1.2.2.4 | **我们目前的脚本工作机制, 会花大量的时间来编译, 头文件包的太厉害** | 1d? | 2010-06-04 | 2010-06-04 | 193 | 58d | 0d |  |
| 196 | 1.2.2.4.1 | 脚本工作机制 | 1d? | 2010-06-04 | 2010-06-04 |  | 58d |  |  |
| 197 | 1.2.2.5 | **聊天系统（不包含具体UI）** | 3d? | 2010-06-07 | 2010-06-09 | 195 | 58d | 0d |  |
| 198 | 1.2.2.5.1 | 消息系统和协议 | 1d? | 2010-06-07 | 2010-06-07 |  | 58d | 0d |  |
| 199 | 1.2.2.5.2 | 收到中文正常显示 | 1d? | 2010-06-08 | 2010-06-08 | 198 | 58d | 0d |  |
| 200 | 1.2.2.5.3 | 服务器联调 | 1d? | 2010-06-09 | 2010-06-09 | 199 | 58d |  |  |
| 201 | 1.2.2.6 | **事件系统强化** | 2d | 2010-06-10 | 2010-06-11 | 197 | 58d | 0d |  |
| 202 | 1.2.2.6.1 | 参数强化 | 1d | 2010-06-10 | 2010-06-10 |  | 58d | 0d |  |
| 203 | 1.2.2.6.2 | 加入客户端事件队列系统 | 1d | 2010-06-11 | 2010-06-11 | 202 | 58d |  |  |
| 204 | 1.2.2.7 | 房间更换墙壁材质规则 | 1d | 2010-06-14 | 2010-06-14 | 201 | 58d |  |  |

| ID | WBS | Task | Duration | Start | Finish | Predecessors | Total slack | Free slack | Constraint |
| --- | --- | --- | --- | --- | --- | --- | --- | --- | --- |
| 205 | 1.2.3 | **林锋** | 13d | 2010-05-18 | 2010-06-03 |  | 65d |  |  |
| 206 | 1.2.3.1 | 场景管理, 逻辑方面的. 之前是邓铭写的, 很混乱. 需要重写. | 2d | 2010-05-18 | 2010-05-19 |  | 65d | 0d | start no earlier than 2010-05-18 |
| 207 | 1.2.3.2 | **房屋编辑器完善** | 5d | 2010-05-20 | 2010-05-26 | 206 | 65d | 0d |  |
| 208 | 1.2.3.2.1 | 灯光编辑修改 | 3d | 2010-05-20 | 2010-05-24 |  | 65d | 0d |  |
| 209 | 1.2.3.2.2 | 其他一些修改 | 2d | 2010-05-25 | 2010-05-26 | 208 | 65d |  |  |
| 210 | 1.2.3.3 | **人与物的操作 家具功能完善** | 4d | 2010-05-27 | 2010-06-01 | 207 | 65d | 0d |  |
| 211 | 1.2.3.3.1 | 使用格填写方式修改 | 2d | 2010-05-27 | 2010-05-28 |  | 65d | 0d |  |
| 212 | 1.2.3.3.2 | 男女识别增加 | 1d | 2010-05-31 | 2010-05-31 | 211 | 65d | 0d |  |
| 213 | 1.2.3.3.3 | 其他服务端联调 | 1d | 2010-06-01 | 2010-06-01 | 212 | 65d |  |  |
| 214 | 1.2.3.4 | pick系统需要一个回调机制 | 2d | 2010-06-02 | 2010-06-03 | 210 | 65d |  |  |
| 215 | 1.2.4 | **黄达嘉** | 78d? | 2010-05-18 | 2010-09-02 |  | 0d |  |  |
| 216 | 1.2.4.1 | **好友系统** | 21d? | 2010-05-18 | 2010-06-15 |  | 0d |  |  |
| 217 | 1.2.4.1.1 | 和策划，服务端沟通 | 1d | 2010-05-18 | 2010-05-18 |  | 0d |  | start no earlier than 2010-05-18 |
| 218 | 1.2.4.1.2 | 好友系统的设计 | 3d | 2010-05-19 | 2010-05-21 | 217 | 0d |  |  |
| 219 | 1.2.4.1.3 | 好友列表的导入 | 1d | 2010-05-24 | 2010-05-24 | 218 | 0d |  |  |
| 220 | 1.2.4.1.4 | **好友名单管理** | 12d? | 2010-05-25 | 2010-06-09 | 219 | 0d |  |  |
| 221 | 1.2.4.1.4.1 | 右键弹出列表管理 | 1.5d? | 2010-05-25 | 2010-05-26 |  | 0d |  |  |
| 222 | 1.2.4.1.4.2 | 邀请对方进入自己房间 | 1d? | 2010-05-26 | 2010-05-27 | 221 | 0d |  |  |
| 223 | 1.2.4.1.4.3 | 访问好友房间 | 1d? | 2010-05-27 | 2010-05-28 | 222 | 0d |  |  |
| 224 | 1.2.4.1.4.4 | 删除好友 | 0.5d | 2010-05-28 | 2010-05-28 | 223 | 0d |  |  |
| 225 | 1.2.4.1.4.5 | 查看好友资料 | 2d | 2010-05-31 | 2010-06-01 | 224 | 0d |  |  |
| 226 | 1.2.4.1.4.6 | 发送邮件 | 0.5d | 2010-06-02 | 2010-06-02 | 225 | 0d |  |  |
| 227 | 1.2.4.1.4.7 | 移动好友 | 0.5d | 2010-06-02 | 2010-06-02 | 226 | 0d |  |  |
| 228 | 1.2.4.1.4.8 | 好友分级和权限分配 | 3d? | 2010-06-03 | 2010-06-07 | 227 | 0d |  |  |
| 229 | 1.2.4.1.4.9 | 陌生人 | 1d | 2010-06-08 | 2010-06-08 | 228 | 0d |  |  |
| 230 | 1.2.4.1.4.10 | 黑名单 | 1d | 2010-06-09 | 2010-06-09 | 229 | 0d |  |  |

| ID | WBS | Task | Duration | Start | Finish | Predecessors | Total slack | Free slack | Constraint |
| --- | --- | --- | --- | --- | --- | --- | --- | --- | --- |
| 231 | 1.2.4.1.5 | **好友搜索** | 4d? | 2010-06-10 | 2010-06-15 | 220 | 0d |  |  |
| 232 | 1.2.4.1.5.1 | EQ号码搜索 | 1d? | 2010-06-10 | 2010-06-10 |  | 0d |  |  |
| 233 | 1.2.4.1.5.2 | 昵称搜索 | 1d? | 2010-06-11 | 2010-06-11 | 232 | 0d |  |  |
| 234 | 1.2.4.1.5.3 | 邮箱地址搜索 | 1d? | 2010-06-14 | 2010-06-14 | 233 | 0d |  |  |
| 235 | 1.2.4.1.5.4 | 搜索结果的显示 | 1d | 2010-06-15 | 2010-06-15 | 234 | 0d |  |  |
| 236 | 1.2.4.2 | imageset icon只需要一个模板就好 | 2d? | 2010-06-16 | 2010-06-17 | 216 | 0d |  |  |
| 237 | 1.2.4.3 | **玩家信息查看** | 9d? | 2010-06-18 | 2010-06-30 | 236 | 0d |  |  |
| 238 | 1.2.4.3.1 | 个人形象查看 | 3d? | 2010-06-18 | 2010-06-22 |  | 0d |  |  |
| 239 | 1.2.4.3.2 | 基本资料查看 | 1d | 2010-06-23 | 2010-06-23 | 238 | 0d |  |  |
| 240 | 1.2.4.3.3 | 详细资料查看 | 1d | 2010-06-24 | 2010-06-24 | 239 | 0d |  |  |
| 241 | 1.2.4.3.4 | 通讯资料查看 | 1d | 2010-06-25 | 2010-06-25 | 240 | 0d |  |  |
| 242 | 1.2.4.3.5 | 个人相册查看 | 3d? | 2010-06-28 | 2010-06-30 | 241 | 0d |  |  |
| 243 | 1.2.4.4 | **系统消息的接收处理** | 3d? | 2010-07-01 | 2010-07-05 | 237 | 0d |  |  |
| 244 | 1.2.4.4.1 | 对字符串中的特殊字符进行转换 | 2d? | 2010-07-01 | 2010-07-02 |  | 0d |  |  |
| 245 | 1.2.4.4.2 | 将转换完的消息显示在聊天框中 | 1d? | 2010-07-05 | 2010-07-05 | 244 | 0d |  |  |
| 246 | 1.2.4.5 | 辅助策划制作查看个人房间信息界面 | 1d? | 2010-07-06 | 2010-07-06 | 243 | 0d |  |  |
| 247 | 1.2.4.6 | 环形菜单加强(环形中间增加ICON或者头像) | 2d? | 2010-07-07 | 2010-07-08 | 246 | 0d |  |  |
| 248 | 1.2.4.7 | 增强的tooltip, 类似wow查看物品的效果 | 10d? | 2010-07-09 | 2010-07-22 | 247 | 0d |  |  |
| 249 | 1.2.4.8 | 消息多彩文字显示. UI图文混排 | 20d? | 2010-07-23 | 2010-08-19 | 248 | 0d |  |  |
| 250 | 1.2.4.9 | 点击文字的超链接 | 10d? | 2010-08-20 | 2010-09-02 | 249 | 0d |  |  |
| 251 | 1.2.5 | **邓铭** | 22d | 2010-05-18 | 2010-06-16 |  | 56d |  |  |
| 252 | 1.2.5.1 | **寻路系统应该使用观察者模式** | 5d | 2010-05-18 | 2010-05-24 |  | 56d | 0d |  |
| 253 | 1.2.5.1.1 | 修改两点直线可行算法 | 1d | 2010-05-18 | 2010-05-18 |  | 56d | 0d | start no earlier than 2010-05-18 |
| 254 | 1.2.5.1.2 | 测试两点直线可行算法 | 0.5d | 2010-05-19 | 2010-05-19 | 253 | 56d | 0d |  |
| 255 | 1.2.5.1.3 | 具体了解观察者模式 | 0.5d | 2010-05-19 | 2010-05-19 | 254 | 56d | 0d |  |
| 256 | 1.2.5.1.4 | 代码修改 | 2d | 2010-05-20 | 2010-05-21 | 255 | 56d | 0d |  |
| 257 | 1.2.5.1.5 | 测试 | 1d | 2010-05-24 | 2010-05-24 | 256 | 56d |  |  |

| ID | WBS | Task | Duration | Start | Finish | Predecessors | Total slack | Free slack |
| --- | --- | --- | --- | --- | --- | --- | --- | --- |
| 258 | 1.2.5.2 | **学习lua和UI制作规范** | 3d | 2010-05-25 | 2010-05-27 | 252 | 56d | 0d |
| 259 | 1.2.5.2.1 | 学习Lua | 2d | 2010-05-25 | 2010-05-26 |  | 56d | 0d |
| 260 | 1.2.5.2.2 | 学习UI制作规范及其他UI相关文档 | 1d | 2010-05-27 | 2010-05-27 | 259 | 56d |  |
| 261 | 1.2.5.3 | 协助完成地形编辑功能(按实际情况安排) | 10d | 2010-05-28 | 2010-06-10 | 258 | 56d | 0d |
| 262 | 1.2.5.4 | 协助完成新界面控件开发(因实际情况而定) | 4d | 2010-06-11 | 2010-06-16 | 261 | 56d |  |
